Schedule from OmniPlan.
Project start 2015-09-07

## Resources

| Resource | Group |
| --- | --- |
| 资源 1 | staff |
| 设备 1 | equipment |
| 素材 1 | material |
| 群组 1 | group |
| Xu Chen Fei | staff |
| Dai Wen Bo | staff |

## Schedule

| ID | WBS | Task | Type | Complete | Constraint | Resources | Work | Actual work |
| --- | --- | --- | --- | --- | --- | --- | --- | --- |
| 1 | 1 | **tech gap** |  |  |  |  |  |  |
| 2 | 1.1 | springmvc |  | 100% | start no earlier than 2015-09-10 | Xu Chen Fei | 32h | 32h |
| 3 | 1.2 | json＋springmvc |  |  | start no earlier than 2015-09-17 | Xu Chen Fei | 8h |  |
| 4 | 1.3 | restful service |  |  | start no earlier than 2015-09-18 | Xu Chen Fei | 24h |  |
| 5 | 1.4 | maven springmvc |  | 100% | start no earlier than 2015-09-07 | Xu Chen Fei | 24h | 24h |
| 6 | 1.5 | sonatype nexus |  | 100% | start no earlier than 2015-09-14 | Xu Chen Fei | 8h | 8h |
| 7 | 1.6 | spring mvc, mybatis, json，restful，maven，nexus demo |  | 80% | start no earlier than 2015-09-17 | Xu Chen Fei | 32h | 25.6h |
| 8 | 1.7 | oa bootstrap |  |  | start no earlier than 2015-09-23 | Xu Chen Fei | 24h |  |
| 9 | 1.8 | Grails |  |  | start no earlier than 2015-09-24 | Xu Chen Fei | 24h |  |
| 10 | 2 | **demo version用户管理** |  |  | start no earlier than 2015-09-17 |  |  |  |
| 11 | 2.1 | springmvc+mybatis demo CRUD |  | 75% | start no earlier than 2015-09-17 | Xu Chen Fei | 8h | 6h |
| 12 | 2.2 | bootstrap UI HTML |  |  | start no earlier than 2015-09-17 | Xu Chen Fei | 24h |  |
| 13 | 2.3 | 数据库ER图 |  | 50% | start no earlier than 2015-09-17 | Xu Chen Fei | 16h | 8h |
| 14 | 2.4 | 数据库字段设计 |  | 40% | start no earlier than 2015-09-17 | Xu Chen Fei | 24h | 9.6h |
| 15 | 2.5 | aop rule设计实现 |  |  | start no earlier than 2015-09-23 | Xu Chen Fei | 16h |  |
| 16 | 2.6 | >里程碑 1 | milestone |  | start no earlier than 2015-09-25 |  |  |  |
| 17 | 3 | **任务Task管理** |  |  | start no earlier than 2015-09-29 |  |  |  |
| 18 | 3.1 | Task数据库设计review |  |  | start no earlier than 2015-09-17 |  | 4h |  |
| 19 | 3.2 | Task画面设计review |  |  | start no earlier than 2015-09-17 |  | 4h |  |
| 20 | 3.3 | TaskHTML实现 |  |  | start no earlier than 2015-09-17 |  | 4h |  |
| 21 | 3.4 | TaskCRUD实现 |  |  | start no earlier than 2015-09-17 |  | 16h |  |
| 22 | 4 | **notes管理** |  |  | start no earlier than 2015-10-01 |  |  |  |
| 23 | 4.1 | notes数据库设计review |  |  | start no earlier than 2015-09-17 |  | 4h |  |
| 24 | 4.2 | notes画面设计review |  |  | start no earlier than 2015-09-17 |  | 4h |  |
| 25 | 4.3 | notesHTML实现 |  |  | start no earlier than 2015-10-02 |  | 8h |  |
| 26 | 4.4 | notesCRUD实现 |  |  | start no earlier than 2015-10-05 |  | 16h |  |

| ID | WBS | Task | Type | Constraint | Resources | Work |
| --- | --- | --- | --- | --- | --- | --- |
| 27 | 5 | **holiday管理** |  | start no earlier than 2015-10-07 |  |  |
| 28 | 5.1 | holiday数据库设计review |  | start no earlier than 2015-10-07 |  | 4h |
| 29 | 5.2 | holiday画面设计review |  | start no earlier than 2015-10-07 |  | 4h |
| 30 | 5.3 | holiday HTML实现 |  | start no earlier than 2015-10-08 |  | 8h |
| 31 | 5.4 | holiday CRUD实现 |  | start no earlier than 2015-10-09 |  | 16h |
| 32 | 5.5 | >里程碑 2 | milestone | start no earlier than 2015-10-09 |  |  |
| 33 | 6 | **文档管理** |  | start no earlier than 2015-10-13 |  |  |
| 34 | 6.1 | 文档数据库设计review |  | start no earlier than 2015-09-17 |  | 4h |
| 35 | 6.2 | 文档画面设计review |  | start no earlier than 2015-09-17 |  | 4h |
| 36 | 6.3 | 文档HTML实现 |  | start no earlier than 2015-10-14 |  | 8h |
| 37 | 6.4 | 文档CRUD实现 |  | start no earlier than 2015-10-15 |  | 20h |
| 38 | 7 | **统一类型管理界面** |  | start no earlier than 2015-10-20 |  |  |
| 39 | 7.1 | 文档类型 |  | start no earlier than 2015-10-20 | Dai Wen Bo | 4h |
| 40 | 7.2 | 任务类型 |  | start no earlier than 2015-10-20 | Dai Wen Bo | 4h |
| 41 | 7.3 | notes类型 |  | start no earlier than 2015-10-21 | Dai Wen Bo | 4h |
| 42 | 7.4 | 活动类型 |  | start no earlier than 2015-10-22 | Dai Wen Bo | 8h |
| 43 | 7.5 | 用户类型 |  | start no earlier than 2015-10-22 | Dai Wen Bo | 8h |
| 44 | 7.6 | >里程碑 3 | milestone | start no earlier than 2015-10-23 |  |  |
| 45 | 8 | **任务活动管理** |  | start no earlier than 2015-10-23 |  |  |
| 46 | 8.1 | 活动模版管理 |  | start no earlier than 2015-10-23 | Dai Wen Bo | 16h |
| 47 | 8.2 | 活动触发 |  | start no earlier than 2015-10-23 | Xu Chen Fei | 16h |
| 48 | 8.3 | 活动关闭 |  | start no earlier than 2015-10-26 | Xu Chen Fei | 16h |
| 49 | 8.4 | 活动依赖 |  | start no earlier than 2015-10-26 | Xu Chen Fei | 16h |
| 50 | 8.5 | >里程碑 4 内测版 | milestone | start no earlier than 2015-10-28 |  |  |

| ID | WBS | Task | Constraint | Work |
| --- | --- | --- | --- | --- |
| 51 | 9 | **工作日历功能** | start no earlier than 2015-10-28 |  |
| 52 | 9.1 | 工作日历数据库设计review | start no earlier than 2015-10-28 | 4h |
| 53 | 9.2 | 工作日历画面设计review | start no earlier than 2015-10-28 | 4h |
| 54 | 9.3 | 工作日历HTML实现 | start no earlier than 2015-10-28 | 8h |
| 55 | 9.4 | 工作日历CRUD实现 | start no earlier than 2015-10-28 | 20h |
| 56 | 10 | **系统管理** | start no earlier than 2015-10-30 |  |
| 57 | 10.1 | 系统管理数据库设计review | start no earlier than 2015-10-30 | 4h |
| 58 | 10.2 | 系统管理画面设计review | start no earlier than 2015-10-30 | 4h |
| 59 | 10.3 | 系统管理HTML实现 | start no earlier than 2015-10-30 | 8h |
| 60 | 10.4 | 系统管理CRUD实现 | start no earlier than 2015-10-30 | 20h |
| 61 | 11 | **管理计划** | start no earlier than 2015-09-17 |  |
| 62 | 11.1 | 企业文化及宗旨 | start no earlier than 2015-09-17 | 24h |
| 63 | 11.2 | 同类软件功能调查 | start no earlier than 2015-09-21 | 8h |
| 64 | 11.3 | 同类软件功能报价 | start no earlier than 2015-09-21 | 8h |
| 65 | 11.4 | 工作职责划分 | start no earlier than 2015-09-21 | 8h |
| 66 | 11.5 | 利润分配讨论并划分 | start no earlier than 2015-09-22 | 16h |
| 67 | 11.6 | 产品盈利模式 | start no earlier than 2015-09-23 | 24h |
| 68 | 11.7 | 风险管理 | start no earlier than 2015-09-29 | 16h |
| 69 | 11.8 | 沟通管理方式 | start no earlier than 2015-10-01 | 16h |
| 70 | 11.9 | 冲突管理方式 | start no earlier than 2015-10-05 | 16h |
